Schedule from OmniPlan, 2013-06-20 to 2013-10-10.
Project start 2013-06-20

## Resources

| Resource | Group |
| --- | --- |
| Resource 1 | staff |
| Equipment 1 | equipment |
| Material 1 | material |
| Group 1 | group |
| Randy | staff |
| Shelly | staff |
| Derf | staff |
| Ben | staff |
| JIB | staff |
| Patrick | staff |
| SC | staff |
| ABR | staff |
| UX | staff |
| EKR | staff |
| John | staff |
| StevenLee | staff |
| Jesup | staff |
| Resource 1 | staff |
| ShianYow | staff |
| Privacy team | staff |
| Security | staff |
| Resource 2 | staff |

## Schedule

| ID | Task | Start | Predecessors | Resources | Work |
| --- | --- | --- | --- | --- | --- |
| 1 | JS Media Recorder API |  |  | Randy |  |
| 2 | (Native) Opus Encoder |  |  | Shelly |  |
| 3 | (Native) Media Encoder Framework |  |  | Shelly |  |
| 4 | Opus perf optimizations (recording) | 2013-06-20 |  | Ben | 160h |
| 5 | Design gUM permissions dialog | 2013-06-20 |  | UX | 160h |
| 6 | Privacy review for B2G | 2013-07-18 | 5 | Privacy team | 40h |
| 7 | Implement gUM permissions dialog |  | 5 |  | 160h |
| 8 | App manifest properties for B2G permissions |  |  |  | 40h |
| 9 | Audio device module | 2013-06-20 |  | JIB | 64h |
| 10 | E10S: Interface prioritization | 2013-06-20 |  | Patrick | 80h |
| 11 | E10S: UDP split functional | 2013-06-20 |  | SC | 40h |
| 12 | E10S: UDP split performance | 2013-06-27 | 11 | SC | 120h |
| 13 | E10S: Packet filter | 2013-07-04 |  | Patrick | 160h |
| 14 | E10S: Packet filter review | 2013-08-01 | 13 | Security | 40h |
| 15 | E10S: Audio input | 2013-08-02 |  | SC | 160h |
| 16 | E10S: Video packet input | 2013-08-30 | 15 | SC | 40h |
| 17 | Signaling path latency tuning (500 ms stalls) | 2013-06-20 |  | ABR | 40h |
| 18 | Profile audio latency | 2013-06-20 |  | StevenLee | 120h |
| 19 | Profile video latency | 2013-07-11 |  | StevenLee | 120h |
| 20 | Negotiate acceptable video parameters | 2013-06-20 |  | ShianYow | 80h |
| 21 | Automatically set video from negotiated ranges | 2013-07-04 | 20 | ShianYow | 40h |
| 22 | Working C++ unit tests on automation | 2013-06-20 |  | John | 160h |
| 23 | gUM mochitests on tbpl | 2013-07-19 |  | John | 160h |
| 24 | Prototype hardware encoding | 2013-06-20 |  | EKR [50%] | 80h |
| 25 | Improved perf benchmarks for A/V including microbenchmarks | 2013-07-18 | 24 | EKR [50%] | 80h |
| 26 | Determine best parameters for acceptable responsiveness | 2013-08-01 |  | StevenLee | 80h |
| 27 | Assess best-case video encoding complexity in software | 2013-08-15 |  | StevenLee | 160h |
| 28 | Assess best-case near-term audio encoding complexity | 2013-09-12 |  | StevenLee | 160h |
| 29 | Preliminary hardware encoding measurements | 2013-10-10 |  | StevenLee | 320h |
| 30 | ICE: handle dynamic network change | 2013-07-11 |  | ShianYow | 120h |
