Schedule from OmniPlan, 2013-08-07 to 2014-09-17.
Project start 2013-08-07

## Resources

| Resource | Group |
| --- | --- |
| Resource 1 | staff |
| Equipment 1 | equipment |
| Material 1 | material |
| Group 1 | group |
| EKR | staff |
| ABR | staff |
| Jesup | staff |
| Tim | staff |
| Ryan | staff |
| Paul | staff |
| GCP | staff |
| Ben | staff |
| JIB | staff |
| UX | staff |
| Roc | staff |
| Shian-Yow | staff |
| Test 1 | staff |
| Adam Cain | staff |
| Shelly | staff |
| Randy | staff |
| FF 26 | staff |
| UX + Frontend | staff |
| Ehugg | staff |
| Network Engineer 1 | staff |
| Network engineer 2 | staff |
| Ted | staff |
| Rillian | staff |
| Jed | staff |
| Resource 2 | staff |
| Resource 1 | staff |
| FF 27 | staff |
| FF 28 | staff |
| FF 29 | staff |

## Schedule

| ID | Task | Type | Start | Predecessors | Resources | Work |
| --- | --- | --- | --- | --- | --- | --- |
| 1 | FIREFOX 26 |  | 2013-08-07 |  | FF 26 | 240h |
| 2 | FIREFOX 27 |  | 2013-09-18 | 1 | FF 27 | 240h |
| 3 | FIREFOX 28 |  | 2013-10-30 | 2 | FF 28 | 240h |
| 4 | FIREFOX 29 |  | 2013-12-11 | 3 | FF 29 | 240h |
| 5 | Generic identity |  | 2013-08-07 |  | Jed | 160h |
| 6 | Persona Integration |  | 2013-09-04 | 5 | Ryan | 320h |
| 7 | Video perf measurements II |  | 2013-08-07 |  | Ben | 160h |
| 8 | Audio recording (rec API) |  | 2013-08-07 |  | Shelly | 40h |
| 9 | Video recording (rec API) |  | 2013-08-14 |  | Shelly | 40h |
| 10 | Audio latency - acceptable |  | 2013-09-25 | 14, 13 | Jesup [70%] | 320h |
| 11 | Uplift to GIPS 3.34 |  | 2013-08-07 |  | Jesup [70%] | 40h |
| 12 | Audio latency & pipeline excellent |  | 2013-12-13 | 14 | Jesup [70%] | 320h |
| 13 | Audio latency measurement and backend |  | 2013-08-07 |  | Paul | 160h |
| 14 | Media perf instrumentation |  | 2013-08-16 |  | Jesup [70%] | 160h |
| 15 | AEC that spans all devices |  | 2014-03-05 |  | Jesup [70%] | 320h |
| 16 | Global media congestion control |  | 2014-05-23 |  | Jesup [70%] | 320h |
| 17 | Combined media/data congestion control |  | 2014-08-12 |  | Jesup [70%] | 320h |
| 18 | Plan for quality eval infrastructure |  | 2013-09-04 |  | Paul | 320h |
| 19 | Quality evaluations infrastructure |  | 2013-10-30 |  | Paul | 960h |
| 20 | Multiple simultaneous peer connections instrumentation and analysis |  | 2014-04-16 |  | Paul | 160h |
| 21 | Multiple simultaneous peer connections working ok |  | 2014-05-14 |  | Paul | 320h |
| 22 | Multiple simultaneous peerconnections working well |  | 2014-07-09 |  | Paul | 480h |
| 23 | CPU Overload (design and implementation) |  | 2013-08-07 |  | GCP | 320h |
| 24 | Statistics API - basic for telemetry |  | 2013-08-07 |  | JIB | 160h |
| 25 | Implement error reporting behavior ??? |  | 2013-09-04 |  | JIB | 320h |
| 26 | gUM constraints |  | 2013-11-13 |  | JIB | 480h |
| 27 | Non-interactive device selection |  | 2014-02-05 |  | JIB | 480h |
| 28 | Implement persistent permissions |  | 2014-04-30 |  | JIB | 320h |
| 29 | Screen sharing implementation |  | 2014-06-25 |  | JIB | 480h |
| 30 | Statistics API remaining work |  | 2014-09-17 |  | JIB | 480h |
| 31 | UX for non-interactive device selection |  | 2013-08-07 |  | UX + Frontend | 320h |
| 32 | Persistent permissions UI |  | 2013-10-02 |  | UX + Frontend | 480h |
| 33 | Screen sharing UX |  | 2013-12-25 |  | UX + Frontend | 480h |
| 34 | Full mediastream support |  | 2013-08-07 |  | Roc | 160h |
| 35 | Decouple video frame from audio frame delivery |  | 2013-09-04 |  | Roc | 480h |
| 36 | SDP max fame size (6236) |  | 2013-08-07 |  | Shian-Yow | 320h |
| 37 | Detection of network failure |  | 2013-10-02 |  | Shian-Yow | 320h |
| 38 | Analyze call setup latency |  | 2013-09-23 |  | ABR [60%] | 80h |
| 39 | RTP/RTCP-mux finish |  | 2013-08-07 |  | Ehugg [50%] | 83h |
| 40 | Take Deltas in SDP |  | 2013-09-04 |  | Ehugg [50%] | 320h |
| 41 | BUNDLE signaling |  | 2013-08-07 |  | ABR [60%] | 160h |
| 42 | BUNDLE transport |  | 2013-08-07 |  | Network Engineer 1 | 160h |
| 43 | BUNDLE | milestone |  | 41FF, 42 |  |  |
| 44 | Signaling support for >1 A/V flows |  | 2013-10-16 |  | ABR [60%] | 800h |
| 45 | Networking support for >1 A/V |  | 2013-10-30 |  | Network Engineer 1 | 480h |
| 46 | >1 A/V | milestone |  | 44FF, 45 |  |  |
| 47 | SDP renegotiation for 1 A/V |  | 2014-06-05 | 44 | Ehugg [50%] | 160h |
| 48 | SDP negotiation for >1 A/V flows |  | 2014-07-31 | 47 | Ehugg [50%] | 480h |
| 49 | Renegotiation | milestone |  | 48 |  |  |
| 50 | ICE state reporting |  | 2014-01-22 |  | EKR [50%] | 160h |
| 51 | ICE unit tests with simulated NAT |  | 2014-03-19 |  | EKR [50%] | 800h |
| 52 | Trickle ICE (generate) |  | 2013-10-02 |  | EKR [50%] | 320h |
| 53 | TURN TCP |  | 2013-08-07 |  | EKR [50%] | 160h |
| 54 | Isolated streams |  |  |  |  | 160h |
| 55 | "Security properties" UI |  | 2014-03-19 |  | UX + Frontend | 480h |
| 56 | Persistent DTLS Keys |  |  |  |  | 320h |
| 57 | Update ICE/ICE restart |  | 2014-01-22 |  | Network Engineer 1 | 480h |
| 58 | Detailed ICE status report to JS |  | 2013-09-04 |  | Network Engineer 1 | 320h |
| 59 | ICE debugging panel |  | 2013-10-30 | 58 | JIB | 80h |
| 60 | Networking testbed and ICE E2E tests |  | 2014-04-16 |  | Network Engineer 1 | 1440h |
| 61 | Build infrastructure for multiple machine testing |  | 2013-08-07 |  | Adam Cain | 320h |
| 62 | Full interop testbed (variety of devices) |  | 2013-08-07 |  | Test 1 | 1440h |
| 63 | Full suite of mochitests |  | 2014-04-16 |  | Test 1 | 1440h |
| 64 | Automated networking testbed |  | 2013-08-07 |  | Ted | 1440h |
| 65 | Improve Opus stereo support in GIPS |  | 2013-08-07 |  | Rillian | 960h |
| 66 | PT reuse/demux |  | 2013-12-25 |  | Ehugg [50%] | 80h |
| 67 | RTP Header Extension for Demux |  | 2014-01-22 |  | Ehugg [50%] | 80h |
| 68 | SSRC Demux |  | 2014-02-19 |  | Ehugg [50%] | 40h |
| 69 | Implement stereo in media pipeline |  | 2014-01-22 |  | Rillian | 160h |
